# ECL Rajmahal CHP SILO 10 MTY***

Schedule from MS Project, 2019-07-05 to 2023-03-02, A marks actual dates.

## Calendars

- CHP Calendar: Mon-Sun 08:00-12:00, 13:00-17:00.

## Schedule

| ID | WBS | Task | Duration | Start | Finish | Predecessors | Complete | Remaining | Baseline start | Baseline finish | Baseline duration | Total slack | Free slack | Text1 |
| --- | --- | --- | --- | --- | --- | --- | --- | --- | --- | --- | --- | --- | --- | --- |
| 1 | 1 | **NIT & Work award** | 636d | 2019-07-05 A | 2021-03-31 |  | 26% | 472d | 2019-07-05 | 2021-03-01 | 606d | 0d |  |  |
| 2 | 1.1 | **Preparation of Scheme & its approval** | 271d | 2019-07-05 A | 2020-03-31 |  | 61% | 107d | 2019-07-05 | 2020-01-31 | 211d | 0d |  |  |
| 3 | 1.1.1 | Offer by CMPDIL | 21d | 2019-07-05 A | 2019-07-25 A |  | 100% |  | 2019-07-05 | 2019-07-25 | 21d |  |  | CMPDI |
| 4 | 1.1.2 | Issue of order to CMPDI | 8d | 2019-07-26 A | 2019-08-02 A | 3 | 100% |  | 2019-07-26 | 2019-08-02 | 8d |  |  | ECL |
| 5 | 1.1.3 | Submission of Draft Scheme | 29d | 2019-08-03 A | 2019-08-31 A | 4 | 100% |  | 2019-08-03 | 2019-08-31 | 29d |  |  | CMPDI |
| 6 | 1.1.4 | Finalisation of Scheme | 53d | 2019-09-01 A | 2019-10-23 A | 5 | 100% |  | 2019-09-01 | 2019-10-31 | 61d |  |  | ECL & CMPDI |
| 7 | 1.1.5 | Approval of Scheme by ECL Board | 53d | 2019-10-24 A | 2019-12-15 A | 6 | 100% |  | 2019-11-01 | 2019-12-15 | 45d |  |  | ECL |
| 8 | 1.1.6 | Approval of Scheme by CIL Board | 107d | 2019-12-16 | 2020-03-31 | 7 |  |  | 2019-12-16 | 2020-01-31 | 47d | 0d |  |  |
| 9 | 1.2 | **NIT Preparation & approval** | 121d | 2020-04-01 | 2020-07-30 |  |  |  | 2020-02-01 | 2020-06-30 | 151d | 0d |  |  |
| 10 | 1.2.1 | Preparation of NIT | 60d | 2020-04-01 | 2020-05-30 | 8 |  |  | 2020-02-01 | 2020-04-30 | 90d | 0d |  | CMPDIL |
| 11 | 1.2.2 | Vetting by different departments | 31d | 2020-05-31 | 2020-06-30 | 10 |  |  | 2020-05-01 | 2020-05-31 | 31d | 0d |  | ECL |
| 12 | 1.2.3 | Approval of NIT | 30d | 2020-07-01 | 2020-07-30 | 11 |  |  | 2020-06-01 | 2020-06-30 | 30d | 0d |  | ECL |
| 13 | 1.3 | **Tendering & Award** | 244d | 2020-07-31 | 2021-03-31 |  |  |  | 2020-07-01 | 2021-03-01 | 244d | 0d |  |  |
| 14 | 1.3.1 | Floating of Tender | 31d | 2020-07-31 | 2020-08-30 | 12 |  |  | 2020-07-01 | 2020-07-31 | 31d | 0d |  | ECL |
| 15 | 1.3.2 | Opening of Tender | 31d | 2020-08-31 | 2020-09-30 | 14 |  |  | 2020-08-01 | 2020-08-31 | 31d | 0d |  | ECL |
| 16 | 1.3.3 | Scrutiny of BID and Preparation of TCR | 61d | 2020-10-01 | 2020-11-30 | 15 |  |  | 2020-09-01 | 2020-10-31 | 61d | 0d |  | ECL |
| 17 | 1.3.4 | Approval of TCR | 30d | 2020-12-01 | 2020-12-30 | 16 |  |  | 2020-11-01 | 2020-11-30 | 30d | 0d |  | ECL |
| 18 | 1.3.5 | Issue of Work Order/ LoA | 31d | 2020-12-31 | 2021-01-30 | 17 |  |  | 2020-12-01 | 2020-12-31 | 31d | 0d |  | ECL |
| 19 | 1.3.6 | Submission of Performance BG and Signing of Agreement | 60d | 2021-01-31 | 2021-03-31 | 18 |  |  | 2021-01-01 | 2021-03-01 | 60d | 0d |  |  |
| 20 | 2 | **Land Acquisition** | 516d | 2019-07-05 A | 2020-12-01 |  | 45% | 285.6d | 2019-07-05 | 2020-12-01 | 516d | 60d |  |  |
| 21 | 2.1 | Assessment of Land Requirement | 180d | 2019-07-05 A | 2019-12-31 A |  | 100% |  | 2019-07-05 | 2019-12-31 | 180d |  |  | ECL |
| 22 | 2.2 | Acquisition and Possession of Land | 336d | 2020-01-01 A | 2020-12-01 | 21 | 15% | 285.6d | 2020-01-01 | 2020-12-01 | 336d | 60d |  | ECL |
| 23 | 3 | **EC Enhancement** | 266d | 2019-07-05 A | 2020-03-26 |  | 33% | 178d | 2019-07-05 | 2020-02-29 | 240d | 1071d |  |  |
| 24 | 3.1 | Preparartion of Mine Plan | 58d | 2019-07-05 A | 2019-08-31 A |  | 100% |  | 2019-07-05 | 2019-08-31 | 58d |  |  | CMPDI |
| 25 | 3.2 | Approval of Mine Plan by ECL Board | 26d | 2019-09-01 A | 2019-09-26 A | 24 | 100% |  | 2019-09-01 | 2019-09-30 | 30d |  |  | ECL |
| 26 | 3.3 | Submission of application to MoEF under Rule 7(ii) | 4d | 2019-09-27 A | 2019-09-30 A | 25 | 100% |  | 2019-10-01 | 2019-10-31 | 31d |  |  | ECL |
| 27 | 3.4 | Consideration by EAC & Recommendation | 134d | 2019-10-01 | 2020-02-11 | 26 |  |  | 2019-11-01 | 2020-01-16 | 77d | 1071d | 0d | MoEF |
| 28 | 3.5 | Issuance of EC Enhancement letter | 15d | 2020-02-12 | 2020-02-26 | 27 |  |  | 2020-01-17 | 2020-01-31 | 15d | 1071d | 0d | MoEF |
| 29 | 3.6 | Grant of CTO | 29d | 2020-02-27 | 2020-03-26 | 28 |  |  | 2020-02-01 | 2020-02-29 | 29d | 1071d |  | Pollution Control Board |

Notes:
- 3: Text2: Offer recieved
- 4: Text2: WO issued on 02.08.19
- 5: Text2: Draft Scheme Submitted on 01.10.19. Final Scheme submitted by CMPDIL on 23.10.19.
- 6: Text2: Final Scheme submitted by CMPDIL on 23.10.19.To be placed in ensuing ECL Board.
- 7: Text2: Scheme submitted by CMPDIL on 01.10.2019.Under Scrutiny at ECL
- 8: Text2: On 16.01.11 ESC of ECL Board advised to re-examine the design of CHP
- 25: Text2: Approved by ECL Board on 26.09.19
- 27: Text2: EAC held on 22-10-19 recommended for revalidation of EC for17.00MTY. Recommendation issued by EAC with some observations. Compliance of observations likely to be submitted / uploaded by 24-11-19. EAC will consider the proposal thereafter.

| ID | WBS | Task | Duration | Start | Finish | Predecessors | Complete | Remaining | Baseline start | Baseline finish | Baseline duration | Total slack | Text1 |
| --- | --- | --- | --- | --- | --- | --- | --- | --- | --- | --- | --- | --- | --- |
| 30 | 4 | **Strengthening of Existing MGR System** | 1276d | 2019-07-05 A | 2022-12-31 |  | 14% | 1096d | 2019-07-05 | 2022-12-31 | 1276d | 61d |  |
| 31 | 4.1 | Taking the matter with NTPC | 88d | 2019-07-05 A | 2019-09-30 A |  | 100% |  | 2019-07-05 | 2019-09-30 | 88d |  | ECL |
| 32 | 4.2 | Commitment by NTPC to strengthen existing MGR system for handling additional 10 MTPA coal | 92d | 2019-10-01 A | 2019-12-31 A | 31 | 100% |  | 2019-10-01 | 2019-12-31 | 92d |  | NTPC |
| 33 | 4.3 | Construction of additional lines for new silo by NTPC | 1096d | 2020-01-01 | 2022-12-31 | 32 |  |  | 2020-01-01 | 2022-12-31 | 1096d | 61d | NTPC |
| 34 | 5 | **Construction** | 761d | 2021-01-31 | 2023-03-02 |  |  |  | 2021-01-01 | 2023-01-31 | 761d | 0d |  |
| 35 | 5.1 | Site handover to contractor & Resource mobilization by Contractor | 30d | 2021-01-31 | 2021-03-01 | 22, 18 |  |  | 2021-01-01 | 2021-01-30 | 30d | 0d | ECL & CONTRACTOR |
| 36 | 5.2 | Engineering & design | 150d | 2021-03-02 | 2021-07-29 | 19FS-30d, 35 |  |  | 2021-01-31 | 2021-06-29 | 150d | 0d | CONTRACTOR & CMPDIL |
| 37 | 5.3 | Civil & structural Works | 396d | 2021-07-30 | 2022-08-29 | 36 |  |  | 2021-06-30 | 2022-07-30 | 396d | 0d | CONTRACTOR |
| 38 | 5.4 | Supply & Erection of Electrical and Mechanical Equipments | 369d | 2021-12-27 | 2022-12-30 | 37SS+150d, 36 |  |  | 2021-11-27 | 2022-11-30 | 369d | 0d | CONTRACTOR |
| 39 | 5.5 | Commissioning | 62d | 2022-12-31 | 2023-03-02 | 38, 33FS-62d |  |  | 2022-12-01 | 2023-01-31 | 62d | 0d | CONTRACTOR |

Notes:
- 31: Text2: Meeting held with NTPC on 09.08 & 25.09.
- 32: Text2: Field survey done by M/s RITES on 15.10.19. RITES submitted the FSR to NTPC on 15.01.20.
